# IT系统功能恢复进度

How a schedule from a web Gantt chart changed from version to version. A marks actual dates.

## Version 1 (saved 2024-11-15)

| ID | WBS | Task | Duration | Start | Finish |
| --- | --- | --- | --- | --- | --- |
| 2 | 1 | **骨干网恢复** | 1d | 2024-11-15 | 2024-11-15 |
| 3 |  | 核心交换板卡级清理维护 | 1d | 2024-11-15 | 2024-11-15 |
| 4 |  | 35台链路层交换机清理维护 | 1d | 2024-11-15 | 2024-11-15 |
| 5 |  | 15台区域接入层交换机安装调试 | 1d | 2024-11-15 | 2024-11-15 |
| 6 |  | 港口无线链路设备安装调试 | 1d | 2024-11-15 | 2024-11-15 |
| 7 |  | 骨干网调试及优化 | 1d | 2024-11-15 | 2024-11-15 |
| 8 | 2 | **信息系统及服务恢复** | 1d | 2024-11-15 | 2024-11-15 |
| 9 |  | 电子邮件系统更新 | 1d | 2024-11-15 | 2024-11-15 |
| 10 |  | DC-APP服务器授权更新 | 1d | 2024-11-15 | 2024-11-15 |
| 11 |  | ISP带宽升级 | 1d | 2024-11-15 | 2024-11-15 |
| 12 |  | 域终端病毒防护系统部署测试 | 1d | 2024-11-15 | 2024-11-15 |
| 13 | 3 | **PC终端设备恢复** | 1d | 2024-11-15 | 2024-11-15 |
| 14 |  | Microsoft-E5授权购买 | 1d | 2024-11-15 | 2024-11-15 |
| 15 |  | Windows11系统更新 | 1d | 2024-11-15 | 2024-11-15 |
| 16 |  | 终端硬件维护 | 1d | 2024-11-15 | 2024-11-15 |
| 17 |  | 终端硬件升级及测试 | 1d | 2024-11-15 | 2024-11-15 |
| 18 | 4 | **打印设备恢复** | 1d | 2024-11-15 | 2024-11-15 |
| 19 |  | 打印机清洁保养维护 | 1d | 2024-11-15 | 2024-11-15 |
| 20 |  | 打印机耗材订购 | 1d | 2024-11-15 | 2024-11-15 |
| 21 |  | 打印机故障修复 | 1d | 2024-11-15 | 2024-11-15 |
| 22 | 5 | **程控电话系统恢复** | 1d | 2024-11-15 | 2024-11-15 |
| 23 |  | IpOffice500语音网关清洁维护 | 1d | 2024-11-15 | 2024-11-15 |
| 24 |  | IpOffice500语音网关R12固件更新 | 1d | 2024-11-15 | 2024-11-15 |
| 25 |  | 配套HP服务器更新 | 1d | 2024-11-15 | 2024-11-15 |
| 26 | 6 | **生活营地无线网络覆盖升级** | 1d | 2024-11-15 | 2024-11-15 |
| 27 |  | 升级零件采购 | 1d | 2024-11-15 | 2024-11-15 |
| 28 |  | 线缆敷设及设备安装 | 1d | 2024-11-15 | 2024-11-15 |
| 29 |  | 配置及调试 | 1d | 2024-11-15 | 2024-11-15 |

## Version 2 (saved 2024-11-15)

Last finish 2024-11-15 → 2025-05-16 (+182d).

Changed:

| ID | Task | Start | Finish | Duration |
| --- | --- | --- | --- | --- |
| 2 | **骨干网恢复** |  | 2024-11-15 → 2025-03-06 (+111d) | 1d → 80d |
| 3 | 核心交换板卡级清理维护 |  | 2024-11-15 → 2024-12-05 (+20d) | 1d → 15d |
| 4 | 35台链路层交换机清理维护 | 2024-11-15 → 2024-12-06 (+21d) | 2024-11-15 → 2024-12-26 (+41d) | 1d → 15d |
| 5 | 15台区域接入层交换机安装调试 | 2024-11-15 → 2024-12-27 (+42d) | 2024-11-15 → 2025-01-16 (+62d) | 1d → 15d |
| 6 | 港口无线链路设备安装调试 | 2024-11-15 → 2025-01-17 (+63d) | 2024-11-15 → 2025-02-13 (+90d) | 1d → 20d |
| 7 | 骨干网调试及优化 | 2024-11-15 → 2025-02-14 (+91d) | 2024-11-15 → 2025-03-06 (+111d) | 1d → 15d |
| 26 | **生活营地无线网络覆盖升级** |  | 2024-11-15 → 2025-05-16 (+182d) | 1d → 131d |
| 29 | 配置及调试 |  | 2024-11-15 → 2025-05-16 (+182d) | 1d → 131d |

## Version 3 (saved 2024-11-19)

Last finish 2025-05-16 → 2025-08-15 (+91d).

Added:

| ID | Task | Duration | Start | Finish | Predecessors |
| --- | --- | --- | --- | --- | --- |
| 2 | 策划准备 | 1d | 2024-11-22 | 2024-11-22 |  |
| 15 | 授权更新准备 | 20d | 2025-04-28 | 2025-05-23 | 13 |
| 17 | 终端零件采购 | 20d | 2025-05-26 | 2025-06-20 | 15 |

Changed:

| ID | Task | Start | Finish | Duration | Predecessors |
| --- | --- | --- | --- | --- | --- |
| 3 | **骨干网恢复** | 2024-11-15 → 2024-11-25 (+10d) | 2025-03-06 → 2025-03-14 (+8d) |  |  |
| 4 | 核心交换板卡级清理维护 | 2024-11-15 → 2024-11-25 (+10d) | 2024-12-05 → 2024-12-13 (+8d) |  | none → 2 |
| 5 | 35台链路层交换机清理维护 | 2024-12-06 → 2024-12-16 (+10d) | 2024-12-26 → 2025-01-03 (+8d) |  | none → 4 |
| 6 | 15台区域接入层交换机安装调试 | 2024-12-27 → 2025-01-06 (+10d) | 2025-01-16 → 2025-01-24 (+8d) |  | none → 5 |
| 7 | 港口无线链路设备安装调试 | 2025-01-17 → 2025-01-27 (+10d) | 2025-02-13 → 2025-02-21 (+8d) |  | none → 6 |
| 8 | 骨干网调试及优化 | 2025-02-14 → 2025-02-24 (+10d) | 2025-03-06 → 2025-03-14 (+8d) |  | none → 7 |
| 9 | **信息系统及服务恢复** | 2024-11-15 → 2025-03-17 (+122d) | 2024-11-15 → 2025-05-23 (+189d) | 1d → 50d |  |
| 10 | 电子邮件系统更新 | 2024-11-15 → 2025-03-17 (+122d) | 2024-11-15 → 2025-05-23 (+189d) | 1d → 50d | none → 8 |
| 11 | DC-APP服务器授权更新 | 2024-11-15 → 2025-03-17 (+122d) | 2024-11-15 → 2025-04-11 (+147d) | 1d → 20d | none → 8 |
| 12 | ISP带宽升级 | 2024-11-15 → 2025-03-17 (+122d) | 2024-11-15 → 2025-04-11 (+147d) | 1d → 20d | none → 8 |
| 13 | 域终端病毒防护系统部署测试 | 2024-11-15 → 2025-03-17 (+122d) | 2024-11-15 → 2025-04-25 (+161d) | 1d → 30d | none → 8 |
| 14 | **PC终端设备恢复** | 2024-11-15 → 2025-04-28 (+164d) | 2024-11-15 → 2025-08-15 (+273d) | 1d → 80d |  |
| 16 | Microsoft-E5授权购买 | 2024-11-15 → 2025-05-26 (+192d) | 2024-11-15 → 2025-06-06 (+203d) | 1d → 10d | none → 15 |
| 18 | 终端硬件维护 | 2024-11-15 → 2025-06-23 (+220d) | 2024-11-15 → 2025-07-18 (+245d) | 1d → 20d | none → 17 |
| 19 | 终端硬件升级及测试 | 2024-11-15 → 2025-07-21 (+248d) | 2024-11-15 → 2025-08-01 (+259d) | 1d → 10d | none → 18 |
| 20 | Windows11系统更新 | 2024-11-15 → 2025-07-21 (+248d) | 2024-11-15 → 2025-08-15 (+273d) | 1d → 20d | none → 18 |
| 21 | **打印设备恢复** | 2024-11-15 → 2024-11-25 (+10d) | 2024-11-15 → 2025-01-17 (+63d) | 1d → 40d |  |
| 22 | 打印机故障修复 | 2024-11-15 → 2024-11-25 (+10d) | 2024-11-15 → 2024-12-20 (+35d) | 1d → 20d | none → 2 |
| 23 | 打印机清洁保养维护 | 2024-11-15 → 2024-12-23 (+38d) | 2024-11-15 → 2025-01-17 (+63d) | 1d → 20d | none → 22 |
| 24 | 打印机耗材订购 | 2024-11-15 → 2024-11-25 (+10d) | 2024-11-15 → 2024-12-20 (+35d) | 1d → 20d | none → 2 |
| 25 | **程控电话系统恢复** | 2024-11-15 → 2024-11-25 (+10d) | 2024-11-15 → 2024-12-13 (+28d) | 1d → 15d |  |
| 26 | IpOffice500语音网关清洁维护 | 2024-11-15 → 2024-11-25 (+10d) | 2024-11-15 → 2024-12-06 (+21d) | 1d → 10d | none → 2 |
| 27 | IpOffice500语音网关R12固件更新 | 2024-11-15 → 2024-11-25 (+10d) | 2024-11-15 → 2024-12-13 (+28d) | 1d → 15d | none → 2 |
| 28 | 配套HP服务器更新 | 2024-11-15 → 2024-11-25 (+10d) | 2024-11-15 → 2024-12-13 (+28d) | 1d → 15d | none → 2 |
| 29 | **生活营地无线网络覆盖升级** | 2024-11-15 → 2025-03-17 (+122d) | 2025-05-16 → 2025-05-23 (+7d) | 131d → 50d |  |
| 30 | 升级零件采购 | 2024-11-15 → 2025-03-17 (+122d) | 2024-11-15 → 2025-04-11 (+147d) | 1d → 20d | none → 8 |
| 31 | 线缆敷设及设备安装 | 2024-11-15 → 2025-04-14 (+150d) | 2024-11-15 → 2025-05-02 (+168d) | 1d → 15d | none → 30 |
| 32 | 配置及调试 | 2024-11-15 → 2025-05-05 (+171d) | 2025-05-16 → 2025-05-23 (+7d) | 131d → 15d | none → 31 |
